# 精品课程_项目开发进度

Schedule from MS Project, 2018-07-01 to 2018-07-20, status date 2018-07-20, 6 hours a day, costs in ¥, A marks actual dates.
Microsoft

## Calendars

- 标准: Mon-Sun 09:00-12:00, 14:00-17:00.

## Resources

| Resource |
| --- |
| 吴东升 |
| 赖海威 |
| 吴杰威 |
| 袁罗秀 |
| 许晓佳 |

## Schedule

| ID | WBS | Task | Type | Duration | Start | Finish | Predecessors | Complete | Remaining | Actual finish | Baseline start | Baseline finish | Baseline duration | Resources | Work | Actual work | Cost | Baseline cost | Actual cost |
| --- | --- | --- | --- | --- | --- | --- | --- | --- | --- | --- | --- | --- | --- | --- | --- | --- | --- | --- | --- |
| 1 | 1 | **精品课程开发与管理系统** |  | 20d | 2018-07-01 A | 2018-07-20 |  | 69% | 6.21d |  | 2018-07-01 | 2018-07-20 | 20d |  | 297h | 207h | 17,820 | 17,820 | 12,420 |
| 2 | 1.1 | **先启阶段** |  | 5d | 2018-07-01 A | 2018-07-05 A |  | 100% |  |  | 2018-07-01 | 2018-07-05 | 5d |  | 66h | 66h | 3,960 | 3,960 | 3,960 |
| 3 | 1.1.1 | **项目管理** |  | 1d | 2018-07-01 A | 2018-07-01 A |  | 100% |  |  | 2018-07-01 | 2018-07-01 | 1d |  | 12h | 12h | 720 | 720 | 720 |
| 4 | 1.1.1.1 | 项目立项 | manual | 0.5d | 2018-07-01 A | 2018-07-01 A |  | 100% |  |  | 2018-07-01 | 2018-07-01 | 0.5d | 吴东升 [50%] | 3h | 3h | 180 | 180 | 180 |
| 5 | 1.1.1.2 | 制定项目计划 | manual | 0.5d | 2018-07-01 A | 2018-07-01 A | 4 | 100% |  |  | 2018-07-01 | 2018-07-01 | 0.5d | 吴东升 [50%] | 3h | 3h | 180 | 180 | 180 |
| 6 | 1.1.1.3 | 同行评审 | manual | 1d | 2018-07-01 A | 2018-07-01 A |  | 100% |  |  | 2018-07-01 | 2018-07-01 | 1d | 赖海威 | 6h | 6h | 360 | 360 | 360 |
| 7 | 1.1.2 | **配置管理** |  | 1d | 2018-07-02 A | 2018-07-02 A |  | 100% |  |  | 2018-07-02 | 2018-07-02 | 1d |  | 6h | 6h | 360 | 360 | 360 |
| 8 | 1.1.2.1 | 制定配置计划 | manual | 0.5d | 2018-07-02 A | 2018-07-02 A |  | 100% |  |  | 2018-07-02 | 2018-07-02 | 0.5d | 吴杰威 | 3h | 3h | 180 | 180 | 180 |
| 9 | 1.1.2.2 | 搭建配置环境 | manual | 0.5d | 2018-07-02 A | 2018-07-02 A | 8 | 100% |  |  | 2018-07-02 | 2018-07-02 | 0.5d | 吴杰威 | 3h | 3h | 180 | 180 | 180 |
| 10 | 1.1.3 | **需求开发** |  | 2d | 2018-07-03 A | 2018-07-04 A |  | 100% |  |  | 2018-07-03 | 2018-07-04 | 2d |  | 36h | 36h | 2,160 | 2,160 | 2,160 |
| 11 | 1.1.3.1 | 用例建模 | manual | 1d | 2018-07-03 A | 2018-07-03 A |  | 100% |  |  | 2018-07-03 | 2018-07-03 | 1d | 袁罗秀; 许晓佳; 吴杰威 | 18h | 18h | 1,080 | 1,080 | 1,080 |
| 12 | 1.1.3.2 | 用例阐述 | manual | 1d | 2018-07-04 A | 2018-07-04 A | 11 | 100% |  |  | 2018-07-04 | 2018-07-04 | 1d | 袁罗秀; 许晓佳; 吴杰威 | 18h | 18h | 1,080 | 1,080 | 1,080 |
| 13 | 1.1.4 | **阶段评审** |  | 1d | 2018-07-05 A | 2018-07-05 A |  | 100% |  |  | 2018-07-05 | 2018-07-05 | 1d |  | 12h | 12h | 720 | 720 | 720 |
| 14 | 1.1.4.1 | 评审需求工件 | manual | 1d | 2018-07-05 A | 2018-07-05 A | 12 | 100% |  |  | 2018-07-05 | 2018-07-05 | 1d | 吴东升 | 6h | 6h | 360 | 360 | 360 |
| 15 | 1.1.4.2 | 发布需求基线 | manual | 1d | 2018-07-05 A | 2018-07-05 A |  | 100% |  |  | 2018-07-05 | 2018-07-05 | 1d | 吴杰威 | 6h | 6h | 360 | 360 | 360 |
| 16 | 1.2 | **精化阶段** |  | 4d | 2018-07-06 A | 2018-07-09 A |  | 100% |  |  | 2018-07-06 | 2018-07-09 | 4d |  | 60h | 60h | 3,600 | 3,600 | 3,600 |
| 17 | 1.2.1 | 设计界面原型 | manual | 1d | 2018-07-06 A | 2018-07-06 A |  | 100% |  |  | 2018-07-06 | 2018-07-06 | 1d | 袁罗秀; 吴东升 | 12h | 12h | 720 | 720 | 720 |
| 18 | 1.2.2 | **OOAD** |  | 2d | 2018-07-06 A | 2018-07-07 |  | 100% |  | 2018-07-06 | 2018-07-06 | 2018-07-07 | 2d |  | 12h | 12h | 720 | 720 | 720 |
| 19 | 1.2.2.1 | 分析模型 | manual | 0.5d | 2018-07-06 A | 2018-07-06 A | 15 | 100% |  |  | 2018-07-06 | 2018-07-06 | 0.5d | 吴杰威; 许晓佳 | 6h | 6h | 360 | 360 | 360 |
| 20 | 1.2.2.2 | 设计模型 | manual | 0.5d | 2018-07-06 A | 2018-07-06 A | 19 | 100% |  |  | 2018-07-06 | 2018-07-06 | 0.5d | 吴杰威; 许晓佳 | 6h | 6h | 360 | 360 | 360 |
| 21 | 1.2.3 | 数据建模与数据库设计 | manual | 1d | 2018-07-06 A | 2018-07-06 A | 15 | 100% |  |  | 2018-07-06 | 2018-07-06 | 1d | 赖海威 | 6h | 6h | 360 | 360 | 360 |
| 22 | 1.2.4 | 集成测试用例设计 | manual | 1d | 2018-07-07 A | 2018-07-07 A | 20 | 100% |  |  | 2018-07-07 | 2018-07-07 | 1d | 赖海威 | 6h | 6h | 360 | 360 | 360 |
| 23 | 1.2.5 | **阶段评审** |  | 2d | 2018-07-08 A | 2018-07-09 A |  | 100% |  |  | 2018-07-08 | 2018-07-09 | 2d |  | 24h | 24h | 1,440 | 1,440 | 1,440 |
| 24 | 1.2.5.1 | 精化配置状态审计 | manual | 1d | 2018-07-08 A | 2018-07-08 A | 17, 18, 21, 22 | 100% |  |  | 2018-07-08 | 2018-07-08 | 1d | 吴东升 | 6h | 6h | 360 | 360 | 360 |
| 25 | 1.2.5.2 | 评审设计工件 | manual | 1d | 2018-07-08 A | 2018-07-08 A | 17, 18, 21, 22 | 100% |  |  | 2018-07-08 | 2018-07-08 | 1d | 许晓佳; 袁罗秀 | 12h | 12h | 720 | 720 | 720 |
| 26 | 1.2.5.3 | 发布设计基线 | manual | 1d | 2018-07-09 A | 2018-07-09 A | 24, 25 | 100% |  |  | 2018-07-09 | 2018-07-09 | 1d | 吴杰威 | 6h | 6h | 360 | 360 | 360 |

| ID | WBS | Task | Type | Duration | Start | Finish | Predecessors | Complete | Remaining | Baseline start | Baseline finish | Baseline duration | Resources | Work | Actual work | Cost | Baseline cost | Actual cost |
| --- | --- | --- | --- | --- | --- | --- | --- | --- | --- | --- | --- | --- | --- | --- | --- | --- | --- | --- |
| 27 | 1.3 | **构建阶段** |  | 10d | 2018-07-10 A | 2018-07-19 |  | 40% | 6d | 2018-07-10 | 2018-07-19 | 10d |  | 171h | 81h | 10,260 | 10,260 | 4,860 |
| 28 | 1.3.1 | 单元编码 | manual | 5d | 2018-07-10 A | 2018-07-14 |  | 60% | 2d | 2018-07-10 | 2018-07-14 | 5d | 赖海威 [50%]; 吴东升 [50%]; 吴杰威; 许晓佳; 袁罗秀 | 120h | 72h | 7,200 | 7,200 | 4,320 |
| 29 | 1.3.2 | 系统集成 | manual | 5d | 2018-07-10 A | 2018-07-14 |  | 60% | 2d | 2018-07-10 | 2018-07-14 | 5d | 吴东升 [50%] | 15h | 9h | 900 | 900 | 540 |
| 30 | 1.3.3 | 集成测试 | manual | 2d | 2018-07-15 | 2018-07-16 | 29 |  |  | 2018-07-15 | 2018-07-16 | 2d | 赖海威 [50%] | 6h |  | 360 | 360 |  |
| 31 | 1.3.4 | **阶段评审** |  | 3d | 2018-07-17 | 2018-07-19 |  |  |  | 2018-07-17 | 2018-07-19 | 3d |  | 30h |  | 1,800 | 1,800 |  |
| 32 | 1.3.4.1 | 构建配置状态审计 | manual | 1d | 2018-07-17 | 2018-07-17 | 30 |  |  | 2018-07-17 | 2018-07-17 | 1d | 许晓佳; 袁罗秀 | 12h |  | 720 | 720 |  |
| 33 | 1.3.4.2 | 评审构建工件 | manual | 1d | 2018-07-18 | 2018-07-18 |  |  |  | 2018-07-18 | 2018-07-18 | 1d | 许晓佳; 袁罗秀 | 12h |  | 720 | 720 |  |
| 34 | 1.3.4.3 | 发布构建基线 | manual | 1d | 2018-07-19 | 2018-07-19 | 32, 33 |  |  | 2018-07-19 | 2018-07-19 | 1d | 吴杰威 | 6h |  | 360 | 360 |  |
